# OBRA GRUESA IPSUM rev.1

Schedule from MS Project, 2018-12-10 to 2020-06-05, status date 2019-03-08, costs in $, A marks actual dates.

## Calendars

- Estándar: Mon-Fri 09:00-13:00, 15:00-19:00; Sat-Sun off.

## Resources

| Resource | Unit | Rate |
| --- | --- | --- |
| Hormigón | m3 | 70000 |
| Fierro | kg | 1200 |
| Moldaje | m2 | 4900 |

## Schedule

| ID | WBS | Task | Duration | Start | Finish | Predecessors | Complete | Remaining | Baseline start | Baseline finish | Baseline duration | Total slack | Constraint | Resources | Cost | Actual cost |
| --- | --- | --- | --- | --- | --- | --- | --- | --- | --- | --- | --- | --- | --- | --- | --- | --- |
| 1 | 1 | **OBRA GRUESA TOTAL** | 390d | 2018-12-10 A | 2020-06-05 |  | 13% | 337.55d | 2018-12-10 | 2020-06-05 | 390d | 0d |  |  | 909,967,000 | 24,983,909.09 |
| 2 | 1.1 | OBRAS PREVIAS | 43d | 2018-12-10 A | 2019-02-06 A |  | 100% |  | 2018-12-10 | 2019-02-06 | 43d |  | start no earlier than 2018-12-10 |  |  |  |
| 3 | 1.2 | **OBRA GRUESA** | 390d | 2018-12-10 A | 2020-06-05 |  | 10% | 349.3d | 2018-12-10 | 2020-06-05 | 390d | 0d |  |  | 909,967,000 | 24,983,909.09 |
| 4 | 1.2.1 | LOSA FUNDACION | 30d | 2018-12-10 A | 2019-01-18 A |  | 100% |  | 2018-12-10 | 2019-01-18 | 30d |  | start no earlier than 2018-12-10 |  |  |  |
| 5 | 1.2.2 | FUNDACIONES | 28d | 2018-12-31 A | 2019-02-06 A | 4FS-15d | 100% |  | 2018-12-31 | 2019-02-06 | 28d |  |  |  |  |  |
| 6 | 1.2.3 | 1° SUBTERRANEO | 29d | 2019-01-17 A | 2019-02-26 A | 5FS-15d | 100% |  | 2019-01-17 | 2019-02-26 | 29d |  |  |  |  |  |
| 7 | 1.2.4 | **1° PISO** | 160d | 2019-02-20 A | 2019-10-01 |  | 56% | 70.4d | 2019-02-20 | 2019-10-01 | 160d | 178d |  |  | 47,893,000 | 24,983,909.09 |
| 8 | 1.2.4.1 | MURO FIERRO | 6d | 2019-02-20 A | 2019-02-27 A | 6FS-5d | 100% |  | 2019-02-20 | 2019-02-27 | 6d |  |  | Fierro [2000 kg] | 2,400,000 | 2,400,000 |
| 9 | 1.2.4.2 | MUROS INSTALACION SANITARIA | 6d | 2019-02-20 A | 2019-02-27 A | 8FF | 100% |  | 2019-02-20 | 2019-02-27 | 6d |  |  |  |  |  |
| 10 | 1.2.4.3 | MUROS INSTALACION ELECTRICA | 6d | 2019-02-20 A | 2019-02-27 A | 8FF | 100% |  | 2019-02-20 | 2019-02-27 | 6d |  |  |  |  |  |
| 11 | 1.2.4.4 | MUROS MOLDAJE | 6d | 2019-02-21 A | 2019-02-28 A | 8FS-5d | 100% |  | 2019-02-21 | 2019-02-28 | 6d |  |  | Moldaje [450 m2] | 2,205,000 | 2,205,000 |
| 12 | 1.2.4.5 | MUROS HORMIGON | 6d | 2019-02-22 A | 2019-03-01 A | 11FS-5d | 100% |  | 2019-02-22 | 2019-03-01 | 6d |  |  | Hormigón [250 m3] | 17,500,000 | 17,500,000 |
| 13 | 1.2.4.6 | LOSA MOLDAJE | 6d | 2019-02-25 A | 2019-03-04 A | 12FS-5d | 100% |  | 2019-02-25 | 2019-03-04 | 6d |  |  | Moldaje [120 m2] | 588,000 | 588,000 |
| 14 | 1.2.4.7 | LOSA FIERRO | 11d | 2019-02-26 A | 2019-07-01 | 13FS-5d | 55% | 5d | 2019-02-26 | 2019-07-01 | 11d | 0d |  | Fierro [3500 kg] | 4,200,000 | 2,290,909.09 |
| 15 | 1.2.4.8 | LOSA INSTALACION SANITARIA | 6d | 2019-06-24 | 2019-07-01 | 14FF |  |  | 2019-06-24 | 2019-07-01 | 6d | 244d |  |  |  |  |
| 16 | 1.2.4.9 | LOSA INSTALACION ELECTRICA | 6d | 2019-06-24 | 2019-07-01 | 14FF |  |  | 2019-06-24 | 2019-07-01 | 6d | 244d |  |  |  |  |
| 17 | 1.2.4.10 | LOSA HORMIGON | 16d | 2019-06-25 | 2019-10-01 | 14FS-5d |  |  | 2019-06-25 | 2019-10-01 | 16d | 0d | start no earlier than 2018-04-23 | Hormigón [300 m3] | 21,000,000 |  |
| 18 | 1.2.5 | **2° PISO** | 11d | 2019-09-27 | 2019-10-11 |  |  |  | 2019-09-27 | 2019-10-11 | 11d | 0d |  |  | 47,893,000 |  |
| 19 | 1.2.5.1 | MURO FIERRO | 6d | 2019-09-27 | 2019-10-04 | 17FS-3d |  |  | 2019-09-27 | 2019-10-04 | 6d | 0d |  | Fierro [2000 kg] | 2,400,000 |  |
| 20 | 1.2.5.2 | MUROS INSTALACION SANITARIA | 6d | 2019-09-27 | 2019-10-04 | 19FF |  |  | 2019-09-27 | 2019-10-04 | 6d | 175d |  |  |  |  |
| 21 | 1.2.5.3 | MUROS INSTALACION ELECTRICA | 6d | 2019-09-27 | 2019-10-04 | 19FF |  |  | 2019-09-27 | 2019-10-04 | 6d | 175d |  |  |  |  |
| 22 | 1.2.5.4 | MUROS MOLDAJE | 6d | 2019-09-30 | 2019-10-07 | 19FS-5d |  |  | 2019-09-30 | 2019-10-07 | 6d | 0d |  | Moldaje [450 m2] | 2,205,000 |  |
| 23 | 1.2.5.5 | MUROS HORMIGON | 6d | 2019-10-01 | 2019-10-08 | 22FS-5d |  |  | 2019-10-01 | 2019-10-08 | 6d | 0d |  | Hormigón [250 m3] | 17,500,000 |  |
| 24 | 1.2.5.6 | LOSA MOLDAJE | 6d | 2019-10-02 | 2019-10-09 | 23FS-5d |  |  | 2019-10-02 | 2019-10-09 | 6d | 0d |  | Moldaje [120 m2] | 588,000 |  |
| 25 | 1.2.5.7 | LOSA FIERRO | 6d | 2019-10-03 | 2019-10-10 | 24FS-5d |  |  | 2019-10-03 | 2019-10-10 | 6d | 0d |  | Fierro [3500 kg] | 4,200,000 |  |
| 26 | 1.2.5.8 | LOSA INSTALACION SANITARIA | 6d | 2019-10-03 | 2019-10-10 | 25FF |  |  | 2019-10-03 | 2019-10-10 | 6d | 171d |  |  |  |  |
| 27 | 1.2.5.9 | LOSA INSTALACION ELECTRICA | 6d | 2019-10-03 | 2019-10-10 | 25FF |  |  | 2019-10-03 | 2019-10-10 | 6d | 171d |  |  |  |  |
| 28 | 1.2.5.10 | LOSA HORMIGON | 6d | 2019-10-04 | 2019-10-11 | 25FS-5d |  |  | 2019-10-04 | 2019-10-11 | 6d | 0d |  | Hormigón [300 m3] | 21,000,000 |  |

| ID | WBS | Task | Duration | Start | Finish | Predecessors | Baseline start | Baseline finish | Baseline duration | Total slack | Constraint | Resources | Cost |
| --- | --- | --- | --- | --- | --- | --- | --- | --- | --- | --- | --- | --- | --- |
| 29 | 1.2.6 | **3° PISO** | 11d | 2019-10-14 | 2019-10-28 |  | 2019-10-14 | 2019-10-28 | 11d | 0d |  |  | 47,893,000 |
| 30 | 1.2.6.1 | MURO FIERRO | 6d | 2019-10-14 | 2019-10-21 | 28 | 2019-10-14 | 2019-10-21 | 6d | 0d |  | Fierro [2000 kg] | 2,400,000 |
| 31 | 1.2.6.2 | MUROS INSTALACION SANITARIA | 6d | 2019-10-14 | 2019-10-21 | 30FF | 2019-10-14 | 2019-10-21 | 6d | 164d |  |  |  |
| 32 | 1.2.6.3 | MUROS INSTALACION ELECTRICA | 6d | 2019-10-14 | 2019-10-21 | 30FF | 2019-10-14 | 2019-10-21 | 6d | 164d |  |  |  |
| 33 | 1.2.6.4 | MUROS MOLDAJE | 6d | 2019-10-15 | 2019-10-22 | 30FS-5d | 2019-10-15 | 2019-10-22 | 6d | 0d |  | Moldaje [450 m2] | 2,205,000 |
| 34 | 1.2.6.5 | MUROS HORMIGON | 6d | 2019-10-16 | 2019-10-23 | 33FS-5d | 2019-10-16 | 2019-10-23 | 6d | 0d |  | Hormigón [250 m3] | 17,500,000 |
| 35 | 1.2.6.6 | LOSA MOLDAJE | 6d | 2019-10-17 | 2019-10-24 | 34FS-5d | 2019-10-17 | 2019-10-24 | 6d | 0d |  | Moldaje [120 m2] | 588,000 |
| 36 | 1.2.6.7 | LOSA FIERRO | 6d | 2019-10-18 | 2019-10-25 | 35FS-5d | 2019-10-18 | 2019-10-25 | 6d | 0d |  | Fierro [3500 kg] | 4,200,000 |
| 37 | 1.2.6.8 | LOSA INSTALACION SANITARIA | 6d | 2019-10-18 | 2019-10-25 | 36FF | 2019-10-18 | 2019-10-25 | 6d | 160d |  |  |  |
| 38 | 1.2.6.9 | LOSA INSTALACION ELECTRICA | 6d | 2019-10-18 | 2019-10-25 | 36FF | 2019-10-18 | 2019-10-25 | 6d | 160d |  |  |  |
| 39 | 1.2.6.10 | LOSA HORMIGON | 6d | 2019-10-21 | 2019-10-28 | 36FS-5d | 2019-10-21 | 2019-10-28 | 6d | 0d |  | Hormigón [300 m3] | 21,000,000 |
| 40 | 1.2.7 | **4° PISO** | 11d | 2019-10-28 | 2019-11-11 |  | 2019-10-28 | 2019-11-11 | 11d | 0d |  |  | 47,893,000 |
| 41 | 1.2.7.1 | MURO FIERRO | 6d | 2019-10-28 | 2019-11-04 | 39FS-1d | 2019-10-28 | 2019-11-04 | 6d | 0d | finish no earlier than 2017-12-18 | Fierro [2000 kg] | 2,400,000 |
| 42 | 1.2.7.2 | MUROS INSTALACION SANITARIA | 6d | 2019-10-28 | 2019-11-04 | 41FF | 2019-10-28 | 2019-11-04 | 6d | 154d |  |  |  |
| 43 | 1.2.7.3 | MUROS INSTALACION ELECTRICA | 6d | 2019-10-28 | 2019-11-04 | 41FF | 2019-10-28 | 2019-11-04 | 6d | 154d |  |  |  |
| 44 | 1.2.7.4 | MUROS MOLDAJE | 6d | 2019-10-29 | 2019-11-05 | 41FS-5d | 2019-10-29 | 2019-11-05 | 6d | 0d | finish no earlier than 2017-12-19 | Moldaje [450 m2] | 2,205,000 |
| 45 | 1.2.7.5 | MUROS HORMIGON | 6d | 2019-10-30 | 2019-11-06 | 44FS-5d | 2019-10-30 | 2019-11-06 | 6d | 0d | finish no earlier than 2017-12-20 | Hormigón [250 m3] | 17,500,000 |
| 46 | 1.2.7.6 | LOSA MOLDAJE | 6d | 2019-10-31 | 2019-11-07 | 45FS-5d | 2019-10-31 | 2019-11-07 | 6d | 0d | finish no earlier than 2017-12-21 | Moldaje [120 m2] | 588,000 |
| 47 | 1.2.7.7 | LOSA FIERRO | 6d | 2019-11-01 | 2019-11-08 | 46FS-5d | 2019-11-01 | 2019-11-08 | 6d | 0d | finish no earlier than 2017-12-22 | Fierro [3500 kg] | 4,200,000 |
| 48 | 1.2.7.8 | LOSA INSTALACION SANITARIA | 6d | 2019-11-01 | 2019-11-08 | 47FF | 2019-11-01 | 2019-11-08 | 6d | 150d | start no earlier than 2018-03-20 |  |  |
| 49 | 1.2.7.9 | LOSA INSTALACION ELECTRICA | 6d | 2019-11-01 | 2019-11-08 | 47FF | 2019-11-01 | 2019-11-08 | 6d | 150d | start no earlier than 2018-03-20 |  |  |
| 50 | 1.2.7.10 | LOSA HORMIGON | 6d | 2019-11-04 | 2019-11-11 | 47FS-5d | 2019-11-04 | 2019-11-11 | 6d | 0d | finish no earlier than 2017-12-25 | Hormigón [300 m3] | 21,000,000 |
| 51 | 1.2.8 | **5° PISO** | 11d | 2019-11-11 | 2019-11-25 |  | 2019-11-11 | 2019-11-25 | 11d | 0d |  |  | 47,893,000 |
| 52 | 1.2.8.1 | MURO FIERRO | 6d | 2019-11-11 | 2019-11-18 | 50FS-1d | 2019-11-11 | 2019-11-18 | 6d | 0d |  | Fierro [2000 kg] | 2,400,000 |
| 53 | 1.2.8.2 | MUROS INSTALACION SANITARIA | 6d | 2019-11-11 | 2019-11-18 | 52FF | 2019-11-11 | 2019-11-18 | 6d | 144d |  |  |  |
| 54 | 1.2.8.3 | MUROS INSTALACION ELECTRICA | 6d | 2019-11-11 | 2019-11-18 | 52FF | 2019-11-11 | 2019-11-18 | 6d | 144d | start no earlier than 2018-03-28 |  |  |
| 55 | 1.2.8.4 | MUROS MOLDAJE | 6d | 2019-11-12 | 2019-11-19 | 52FS-5d | 2019-11-12 | 2019-11-19 | 6d | 0d |  | Moldaje [450 m2] | 2,205,000 |
| 56 | 1.2.8.5 | MUROS HORMIGON | 6d | 2019-11-13 | 2019-11-20 | 55FS-5d | 2019-11-13 | 2019-11-20 | 6d | 0d |  | Hormigón [250 m3] | 17,500,000 |
| 57 | 1.2.8.6 | LOSA MOLDAJE | 6d | 2019-11-14 | 2019-11-21 | 56FS-5d | 2019-11-14 | 2019-11-21 | 6d | 0d |  | Moldaje [120 m2] | 588,000 |
| 58 | 1.2.8.7 | LOSA FIERRO | 6d | 2019-11-15 | 2019-11-22 | 57FS-5d | 2019-11-15 | 2019-11-22 | 6d | 0d |  | Fierro [3500 kg] | 4,200,000 |
| 59 | 1.2.8.8 | LOSA INSTALACION SANITARIA | 6d | 2019-11-15 | 2019-11-22 | 58FF | 2019-11-15 | 2019-11-22 | 6d | 140d | start no earlier than 2018-04-03 |  |  |
| 60 | 1.2.8.9 | LOSA INSTALACION ELECTRICA | 6d | 2019-11-15 | 2019-11-22 | 58FF | 2019-11-15 | 2019-11-22 | 6d | 140d |  |  |  |
| 61 | 1.2.8.10 | LOSA HORMIGON | 6d | 2019-11-18 | 2019-11-25 | 58FS-5d | 2019-11-18 | 2019-11-25 | 6d | 0d |  | Hormigón [300 m3] | 21,000,000 |

| ID | WBS | Task | Duration | Start | Finish | Predecessors | Baseline start | Baseline finish | Baseline duration | Total slack | Constraint | Resources | Cost |
| --- | --- | --- | --- | --- | --- | --- | --- | --- | --- | --- | --- | --- | --- |
| 62 | 1.2.9 | **6° PISO** | 11d | 2019-11-25 | 2019-12-09 |  | 2019-11-25 | 2019-12-09 | 11d | 0d |  |  | 47,893,000 |
| 63 | 1.2.9.1 | MURO FIERRO | 6d | 2019-11-25 | 2019-12-02 | 61FS-1d | 2019-11-25 | 2019-12-02 | 6d | 0d |  | Fierro [2000 kg] | 2,400,000 |
| 64 | 1.2.9.2 | MUROS INSTALACION SANITARIA | 6d | 2019-11-25 | 2019-12-02 | 63FF | 2019-11-25 | 2019-12-02 | 6d | 134d | start no earlier than 2018-04-11 |  |  |
| 65 | 1.2.9.3 | MUROS INSTALACION ELECTRICA | 6d | 2019-11-25 | 2019-12-02 | 63FF | 2019-11-25 | 2019-12-02 | 6d | 134d | start no earlier than 2018-04-11 |  |  |
| 66 | 1.2.9.4 | MUROS MOLDAJE | 6d | 2019-11-26 | 2019-12-03 | 63FS-5d | 2019-11-26 | 2019-12-03 | 6d | 0d |  | Moldaje [450 m2] | 2,205,000 |
| 67 | 1.2.9.5 | MUROS HORMIGON | 6d | 2019-11-27 | 2019-12-04 | 66FS-5d | 2019-11-27 | 2019-12-04 | 6d | 0d |  | Hormigón [250 m3] | 17,500,000 |
| 68 | 1.2.9.6 | LOSA MOLDAJE | 6d | 2019-11-28 | 2019-12-05 | 67FS-5d | 2019-11-28 | 2019-12-05 | 6d | 0d |  | Moldaje [120 m2] | 588,000 |
| 69 | 1.2.9.7 | LOSA FIERRO | 6d | 2019-11-29 | 2019-12-06 | 68FS-5d | 2019-11-29 | 2019-12-06 | 6d | 0d |  | Fierro [3500 kg] | 4,200,000 |
| 70 | 1.2.9.8 | LOSA INSTALACION SANITARIA | 6d | 2019-11-29 | 2019-12-06 | 69FF | 2019-11-29 | 2019-12-06 | 6d | 130d | start no earlier than 2018-04-17 |  |  |
| 71 | 1.2.9.9 | LOSA INSTALACION ELECTRICA | 6d | 2019-11-29 | 2019-12-06 | 69FF | 2019-11-29 | 2019-12-06 | 6d | 130d | start no earlier than 2018-04-17 |  |  |
| 72 | 1.2.9.10 | LOSA HORMIGON | 6d | 2019-12-02 | 2019-12-09 | 69FS-5d | 2019-12-02 | 2019-12-09 | 6d | 0d |  | Hormigón [300 m3] | 21,000,000 |
| 73 | 1.2.10 | **7° PISO** | 11d | 2019-12-09 | 2019-12-23 |  | 2019-12-09 | 2019-12-23 | 11d | 0d |  |  | 47,893,000 |
| 74 | 1.2.10.1 | MURO FIERRO | 6d | 2019-12-09 | 2019-12-16 | 72FS-1d | 2019-12-09 | 2019-12-16 | 6d | 0d |  | Fierro [2000 kg] | 2,400,000 |
| 75 | 1.2.10.2 | MUROS INSTALACION SANITARIA | 6d | 2019-12-09 | 2019-12-16 | 74FF | 2019-12-09 | 2019-12-16 | 6d | 124d |  |  |  |
| 76 | 1.2.10.3 | MUROS INSTALACION ELECTRICA | 6d | 2019-12-09 | 2019-12-16 | 74FF | 2019-12-09 | 2019-12-16 | 6d | 124d |  |  |  |
| 77 | 1.2.10.4 | MUROS MOLDAJE | 6d | 2019-12-10 | 2019-12-17 | 74FS-5d | 2019-12-10 | 2019-12-17 | 6d | 0d |  | Moldaje [450 m2] | 2,205,000 |
| 78 | 1.2.10.5 | MUROS HORMIGON | 6d | 2019-12-11 | 2019-12-18 | 77FS-5d | 2019-12-11 | 2019-12-18 | 6d | 0d |  | Hormigón [250 m3] | 17,500,000 |
| 79 | 1.2.10.6 | LOSA MOLDAJE | 6d | 2019-12-12 | 2019-12-19 | 78FS-5d | 2019-12-12 | 2019-12-19 | 6d | 0d |  | Moldaje [120 m2] | 588,000 |
| 80 | 1.2.10.7 | LOSA FIERRO | 6d | 2019-12-13 | 2019-12-20 | 79FS-5d | 2019-12-13 | 2019-12-20 | 6d | 0d |  | Fierro [3500 kg] | 4,200,000 |
| 81 | 1.2.10.8 | LOSA INSTALACION SANITARIA | 6d | 2019-12-13 | 2019-12-20 | 80FF | 2019-12-13 | 2019-12-20 | 6d | 120d | start no earlier than 2018-05-01 |  |  |
| 82 | 1.2.10.9 | LOSA INSTALACION ELECTRICA | 6d | 2019-12-13 | 2019-12-20 | 80FF | 2019-12-13 | 2019-12-20 | 6d | 120d | start no earlier than 2018-05-01 |  |  |
| 83 | 1.2.10.10 | LOSA HORMIGON | 6d | 2019-12-16 | 2019-12-23 | 80FS-5d | 2019-12-16 | 2019-12-23 | 6d | 0d |  | Hormigón [300 m3] | 21,000,000 |
| 84 | 1.2.11 | **8° PISO** | 11d | 2019-12-23 | 2020-01-06 |  | 2019-12-23 | 2020-01-06 | 11d | 0d |  |  | 47,893,000 |
| 85 | 1.2.11.1 | MURO FIERRO | 6d | 2019-12-23 | 2019-12-30 | 83FS-1d | 2019-12-23 | 2019-12-30 | 6d | 0d |  | Fierro [2000 kg] | 2,400,000 |
| 86 | 1.2.11.2 | MUROS INSTALACION SANITARIA | 6d | 2019-12-23 | 2019-12-30 | 85FF | 2019-12-23 | 2019-12-30 | 6d | 114d |  |  |  |
| 87 | 1.2.11.3 | MUROS INSTALACION ELECTRICA | 6d | 2019-12-23 | 2019-12-30 | 85FF | 2019-12-23 | 2019-12-30 | 6d | 114d |  |  |  |
| 88 | 1.2.11.4 | MUROS MOLDAJE | 6d | 2019-12-24 | 2019-12-31 | 85FS-5d | 2019-12-24 | 2019-12-31 | 6d | 0d |  | Moldaje [450 m2] | 2,205,000 |
| 89 | 1.2.11.5 | MUROS HORMIGON | 6d | 2019-12-25 | 2020-01-01 | 88FS-5d | 2019-12-25 | 2020-01-01 | 6d | 0d |  | Hormigón [250 m3] | 17,500,000 |
| 90 | 1.2.11.6 | LOSA MOLDAJE | 6d | 2019-12-26 | 2020-01-02 | 89FS-5d | 2019-12-26 | 2020-01-02 | 6d | 0d |  | Moldaje [120 m2] | 588,000 |
| 91 | 1.2.11.7 | LOSA FIERRO | 6d | 2019-12-27 | 2020-01-03 | 90FS-5d | 2019-12-27 | 2020-01-03 | 6d | 0d |  | Fierro [3500 kg] | 4,200,000 |
| 92 | 1.2.11.8 | LOSA INSTALACION SANITARIA | 6d | 2019-12-27 | 2020-01-03 | 91FF | 2019-12-27 | 2020-01-03 | 6d | 110d | start no earlier than 2018-05-15 |  |  |
| 93 | 1.2.11.9 | LOSA INSTALACION ELECTRICA | 6d | 2019-12-27 | 2020-01-03 | 91FF | 2019-12-27 | 2020-01-03 | 6d | 110d | start no earlier than 2018-05-15 |  |  |
| 94 | 1.2.11.10 | LOSA HORMIGON | 6d | 2019-12-30 | 2020-01-06 | 91FS-5d | 2019-12-30 | 2020-01-06 | 6d | 0d |  | Hormigón [300 m3] | 21,000,000 |

| ID | WBS | Task | Duration | Start | Finish | Predecessors | Baseline start | Baseline finish | Baseline duration | Total slack | Resources | Cost |
| --- | --- | --- | --- | --- | --- | --- | --- | --- | --- | --- | --- | --- |
| 95 | 1.2.12 | **9° PISO** | 11d | 2020-01-06 | 2020-01-20 |  | 2020-01-06 | 2020-01-20 | 11d | 0d |  | 47,893,000 |
| 96 | 1.2.12.1 | MURO FIERRO | 6d | 2020-01-06 | 2020-01-13 | 94FS-1d | 2020-01-06 | 2020-01-13 | 6d | 0d | Fierro [2000 kg] | 2,400,000 |
| 97 | 1.2.12.2 | MUROS INSTALACION SANITARIA | 6d | 2020-01-06 | 2020-01-13 | 96FF | 2020-01-06 | 2020-01-13 | 6d | 104d |  |  |
| 98 | 1.2.12.3 | MUROS INSTALACION ELECTRICA | 6d | 2020-01-06 | 2020-01-13 | 96FF | 2020-01-06 | 2020-01-13 | 6d | 104d |  |  |
| 99 | 1.2.12.4 | MUROS MOLDAJE | 6d | 2020-01-07 | 2020-01-14 | 96FS-5d | 2020-01-07 | 2020-01-14 | 6d | 0d | Moldaje [450 m2] | 2,205,000 |
| 100 | 1.2.12.5 | MUROS HORMIGON | 6d | 2020-01-08 | 2020-01-15 | 99FS-5d | 2020-01-08 | 2020-01-15 | 6d | 0d | Hormigón [250 m3] | 17,500,000 |
| 101 | 1.2.12.6 | LOSA MOLDAJE | 6d | 2020-01-09 | 2020-01-16 | 100FS-5d | 2020-01-09 | 2020-01-16 | 6d | 0d | Moldaje [120 m2] | 588,000 |
| 102 | 1.2.12.7 | LOSA FIERRO | 6d | 2020-01-10 | 2020-01-17 | 101FS-5d | 2020-01-10 | 2020-01-17 | 6d | 0d | Fierro [3500 kg] | 4,200,000 |
| 103 | 1.2.12.8 | LOSA INSTALACION SANITARIA | 6d | 2020-01-10 | 2020-01-17 | 102FF | 2020-01-10 | 2020-01-17 | 6d | 100d |  |  |
| 104 | 1.2.12.9 | LOSA INSTALACION ELECTRICA | 6d | 2020-01-10 | 2020-01-17 | 102FF | 2020-01-10 | 2020-01-17 | 6d | 100d |  |  |
| 105 | 1.2.12.10 | LOSA HORMIGON | 6d | 2020-01-13 | 2020-01-20 | 102FS-5d | 2020-01-13 | 2020-01-20 | 6d | 0d | Hormigón [300 m3] | 21,000,000 |
| 106 | 1.2.13 | **10° PISO** | 11d | 2020-01-20 | 2020-02-03 |  | 2020-01-20 | 2020-02-03 | 11d | 0d |  | 47,893,000 |
| 107 | 1.2.13.1 | MURO FIERRO | 6d | 2020-01-20 | 2020-01-27 | 105FS-1d | 2020-01-20 | 2020-01-27 | 6d | 0d | Fierro [2000 kg] | 2,400,000 |
| 108 | 1.2.13.2 | MUROS INSTALACION SANITARIA | 6d | 2020-01-20 | 2020-01-27 | 107FF | 2020-01-20 | 2020-01-27 | 6d | 94d |  |  |
| 109 | 1.2.13.3 | MUROS INSTALACION ELECTRICA | 6d | 2020-01-20 | 2020-01-27 | 107FF | 2020-01-20 | 2020-01-27 | 6d | 94d |  |  |
| 110 | 1.2.13.4 | MUROS MOLDAJE | 6d | 2020-01-21 | 2020-01-28 | 107FS-5d | 2020-01-21 | 2020-01-28 | 6d | 0d | Moldaje [450 m2] | 2,205,000 |
| 111 | 1.2.13.5 | MUROS HORMIGON | 6d | 2020-01-22 | 2020-01-29 | 110FS-5d | 2020-01-22 | 2020-01-29 | 6d | 0d | Hormigón [250 m3] | 17,500,000 |
| 112 | 1.2.13.6 | LOSA MOLDAJE | 6d | 2020-01-23 | 2020-01-30 | 111FS-5d | 2020-01-23 | 2020-01-30 | 6d | 0d | Moldaje [120 m2] | 588,000 |
| 113 | 1.2.13.7 | LOSA FIERRO | 6d | 2020-01-24 | 2020-01-31 | 112FS-5d | 2020-01-24 | 2020-01-31 | 6d | 0d | Fierro [3500 kg] | 4,200,000 |
| 114 | 1.2.13.8 | LOSA INSTALACION SANITARIA | 6d | 2020-01-24 | 2020-01-31 | 113FF | 2020-01-24 | 2020-01-31 | 6d | 90d |  |  |
| 115 | 1.2.13.9 | LOSA INSTALACION ELECTRICA | 6d | 2020-01-24 | 2020-01-31 | 113FF | 2020-01-24 | 2020-01-31 | 6d | 90d |  |  |
| 116 | 1.2.13.10 | LOSA HORMIGON | 6d | 2020-01-27 | 2020-02-03 | 113FS-5d | 2020-01-27 | 2020-02-03 | 6d | 0d | Hormigón [300 m3] | 21,000,000 |
| 117 | 1.2.14 | **11° PISO** | 11d | 2020-02-03 | 2020-02-17 |  | 2020-02-03 | 2020-02-17 | 11d | 0d |  | 47,893,000 |
| 118 | 1.2.14.1 | MURO FIERRO | 6d | 2020-02-03 | 2020-02-10 | 116FS-1d | 2020-02-03 | 2020-02-10 | 6d | 0d | Fierro [2000 kg] | 2,400,000 |
| 119 | 1.2.14.2 | MUROS INSTALACION SANITARIA | 6d | 2020-02-03 | 2020-02-10 | 118FF | 2020-02-03 | 2020-02-10 | 6d | 84d |  |  |
| 120 | 1.2.14.3 | MUROS INSTALACION ELECTRICA | 6d | 2020-02-03 | 2020-02-10 | 118FF | 2020-02-03 | 2020-02-10 | 6d | 84d |  |  |
| 121 | 1.2.14.4 | MUROS MOLDAJE | 6d | 2020-02-04 | 2020-02-11 | 118FS-5d | 2020-02-04 | 2020-02-11 | 6d | 0d | Moldaje [450 m2] | 2,205,000 |
| 122 | 1.2.14.5 | MUROS HORMIGON | 6d | 2020-02-05 | 2020-02-12 | 121FS-5d | 2020-02-05 | 2020-02-12 | 6d | 0d | Hormigón [250 m3] | 17,500,000 |
| 123 | 1.2.14.6 | LOSA MOLDAJE | 6d | 2020-02-06 | 2020-02-13 | 122FS-5d | 2020-02-06 | 2020-02-13 | 6d | 0d | Moldaje [120 m2] | 588,000 |
| 124 | 1.2.14.7 | LOSA FIERRO | 6d | 2020-02-07 | 2020-02-14 | 123FS-5d | 2020-02-07 | 2020-02-14 | 6d | 0d | Fierro [3500 kg] | 4,200,000 |
| 125 | 1.2.14.8 | LOSA INSTALACION SANITARIA | 6d | 2020-02-07 | 2020-02-14 | 124FF | 2020-02-07 | 2020-02-14 | 6d | 80d |  |  |
| 126 | 1.2.14.9 | LOSA INSTALACION ELECTRICA | 6d | 2020-02-07 | 2020-02-14 | 124FF | 2020-02-07 | 2020-02-14 | 6d | 80d |  |  |
| 127 | 1.2.14.10 | LOSA HORMIGON | 6d | 2020-02-10 | 2020-02-17 | 124FS-5d | 2020-02-10 | 2020-02-17 | 6d | 0d | Hormigón [300 m3] | 21,000,000 |

| ID | WBS | Task | Duration | Start | Finish | Predecessors | Baseline start | Baseline finish | Baseline duration | Total slack | Resources | Cost |
| --- | --- | --- | --- | --- | --- | --- | --- | --- | --- | --- | --- | --- |
| 128 | 1.2.15 | **12° PISO** | 11d | 2020-02-17 | 2020-03-02 |  | 2020-02-17 | 2020-03-02 | 11d | 0d |  | 47,893,000 |
| 129 | 1.2.15.1 | MURO FIERRO | 6d | 2020-02-17 | 2020-02-24 | 127FS-1d | 2020-02-17 | 2020-02-24 | 6d | 0d | Fierro [2000 kg] | 2,400,000 |
| 130 | 1.2.15.2 | MUROS INSTALACION SANITARIA | 6d | 2020-02-17 | 2020-02-24 | 129FF | 2020-02-17 | 2020-02-24 | 6d | 74d |  |  |
| 131 | 1.2.15.3 | MUROS INSTALACION ELECTRICA | 6d | 2020-02-17 | 2020-02-24 | 129FF | 2020-02-17 | 2020-02-24 | 6d | 74d |  |  |
| 132 | 1.2.15.4 | MUROS MOLDAJE | 6d | 2020-02-18 | 2020-02-25 | 129FS-5d | 2020-02-18 | 2020-02-25 | 6d | 0d | Moldaje [450 m2] | 2,205,000 |
| 133 | 1.2.15.5 | MUROS HORMIGON | 6d | 2020-02-19 | 2020-02-26 | 132FS-5d | 2020-02-19 | 2020-02-26 | 6d | 0d | Hormigón [250 m3] | 17,500,000 |
| 134 | 1.2.15.6 | LOSA MOLDAJE | 6d | 2020-02-20 | 2020-02-27 | 133FS-5d | 2020-02-20 | 2020-02-27 | 6d | 0d | Moldaje [120 m2] | 588,000 |
| 135 | 1.2.15.7 | LOSA FIERRO | 6d | 2020-02-21 | 2020-02-28 | 134FS-5d | 2020-02-21 | 2020-02-28 | 6d | 0d | Fierro [3500 kg] | 4,200,000 |
| 136 | 1.2.15.8 | LOSA INSTALACION SANITARIA | 6d | 2020-02-21 | 2020-02-28 | 135FF | 2020-02-21 | 2020-02-28 | 6d | 70d |  |  |
| 137 | 1.2.15.9 | LOSA INSTALACION ELECTRICA | 6d | 2020-02-21 | 2020-02-28 | 135FF | 2020-02-21 | 2020-02-28 | 6d | 70d |  |  |
| 138 | 1.2.15.10 | LOSA HORMIGON | 6d | 2020-02-24 | 2020-03-02 | 135FS-5d | 2020-02-24 | 2020-03-02 | 6d | 0d | Hormigón [300 m3] | 21,000,000 |
| 139 | 1.2.16 | **13° PISO** | 11d | 2020-03-02 | 2020-03-16 |  | 2020-03-02 | 2020-03-16 | 11d | 0d |  | 47,893,000 |
| 140 | 1.2.16.1 | MURO FIERRO | 6d | 2020-03-02 | 2020-03-09 | 138FS-1d | 2020-03-02 | 2020-03-09 | 6d | 0d | Fierro [2000 kg] | 2,400,000 |
| 141 | 1.2.16.2 | MUROS INSTALACION SANITARIA | 6d | 2020-03-02 | 2020-03-09 | 140FF | 2020-03-02 | 2020-03-09 | 6d | 64d |  |  |
| 142 | 1.2.16.3 | MUROS INSTALACION ELECTRICA | 6d | 2020-03-02 | 2020-03-09 | 140FF | 2020-03-02 | 2020-03-09 | 6d | 64d |  |  |
| 143 | 1.2.16.4 | MUROS MOLDAJE | 6d | 2020-03-03 | 2020-03-10 | 140FS-5d | 2020-03-03 | 2020-03-10 | 6d | 0d | Moldaje [450 m2] | 2,205,000 |
| 144 | 1.2.16.5 | MUROS HORMIGON | 6d | 2020-03-04 | 2020-03-11 | 143FS-5d | 2020-03-04 | 2020-03-11 | 6d | 0d | Hormigón [250 m3] | 17,500,000 |
| 145 | 1.2.16.6 | LOSA MOLDAJE | 6d | 2020-03-05 | 2020-03-12 | 144FS-5d | 2020-03-05 | 2020-03-12 | 6d | 0d | Moldaje [120 m2] | 588,000 |
| 146 | 1.2.16.7 | LOSA FIERRO | 6d | 2020-03-06 | 2020-03-13 | 145FS-5d | 2020-03-06 | 2020-03-13 | 6d | 0d | Fierro [3500 kg] | 4,200,000 |
| 147 | 1.2.16.8 | LOSA INSTALACION SANITARIA | 6d | 2020-03-06 | 2020-03-13 | 146FF | 2020-03-06 | 2020-03-13 | 6d | 60d |  |  |
| 148 | 1.2.16.9 | LOSA INSTALACION ELECTRICA | 6d | 2020-03-06 | 2020-03-13 | 146FF | 2020-03-06 | 2020-03-13 | 6d | 60d |  |  |
| 149 | 1.2.16.10 | LOSA HORMIGON | 6d | 2020-03-09 | 2020-03-16 | 146FS-5d | 2020-03-09 | 2020-03-16 | 6d | 0d | Hormigón [300 m3] | 21,000,000 |
| 150 | 1.2.17 | **14° PISO** | 11d | 2020-03-16 | 2020-03-30 |  | 2020-03-16 | 2020-03-30 | 11d | 0d |  | 47,893,000 |
| 151 | 1.2.17.1 | MURO FIERRO | 6d | 2020-03-16 | 2020-03-23 | 149FS-1d | 2020-03-16 | 2020-03-23 | 6d | 0d | Fierro [2000 kg] | 2,400,000 |
| 152 | 1.2.17.2 | MUROS INSTALACION SANITARIA | 6d | 2020-03-16 | 2020-03-23 | 151FF | 2020-03-16 | 2020-03-23 | 6d | 54d |  |  |
| 153 | 1.2.17.3 | MUROS INSTALACION ELECTRICA | 6d | 2020-03-16 | 2020-03-23 | 151FF | 2020-03-16 | 2020-03-23 | 6d | 54d |  |  |
| 154 | 1.2.17.4 | MUROS MOLDAJE | 6d | 2020-03-17 | 2020-03-24 | 151FS-5d | 2020-03-17 | 2020-03-24 | 6d | 0d | Moldaje [450 m2] | 2,205,000 |
| 155 | 1.2.17.5 | MUROS HORMIGON | 6d | 2020-03-18 | 2020-03-25 | 154FS-5d | 2020-03-18 | 2020-03-25 | 6d | 0d | Hormigón [250 m3] | 17,500,000 |
| 156 | 1.2.17.6 | LOSA MOLDAJE | 6d | 2020-03-19 | 2020-03-26 | 155FS-5d | 2020-03-19 | 2020-03-26 | 6d | 0d | Moldaje [120 m2] | 588,000 |
| 157 | 1.2.17.7 | LOSA FIERRO | 6d | 2020-03-20 | 2020-03-27 | 156FS-5d | 2020-03-20 | 2020-03-27 | 6d | 0d | Fierro [3500 kg] | 4,200,000 |
| 158 | 1.2.17.8 | LOSA INSTALACION SANITARIA | 6d | 2020-03-20 | 2020-03-27 | 157FF | 2020-03-20 | 2020-03-27 | 6d | 50d |  |  |
| 159 | 1.2.17.9 | LOSA INSTALACION ELECTRICA | 6d | 2020-03-20 | 2020-03-27 | 157FF | 2020-03-20 | 2020-03-27 | 6d | 50d |  |  |
| 160 | 1.2.17.10 | LOSA HORMIGON | 6d | 2020-03-23 | 2020-03-30 | 157FS-5d | 2020-03-23 | 2020-03-30 | 6d | 0d | Hormigón [300 m3] | 21,000,000 |

| ID | WBS | Task | Duration | Start | Finish | Predecessors | Baseline start | Baseline finish | Baseline duration | Total slack | Resources | Cost |
| --- | --- | --- | --- | --- | --- | --- | --- | --- | --- | --- | --- | --- |
| 161 | 1.2.18 | **15° PISO** | 11d | 2020-03-30 | 2020-04-13 |  | 2020-03-30 | 2020-04-13 | 11d | 0d |  | 47,893,000 |
| 162 | 1.2.18.1 | MURO FIERRO | 6d | 2020-03-30 | 2020-04-06 | 160FS-1d | 2020-03-30 | 2020-04-06 | 6d | 0d | Fierro [2000 kg] | 2,400,000 |
| 163 | 1.2.18.2 | MUROS INSTALACION SANITARIA | 6d | 2020-03-30 | 2020-04-06 | 162FF | 2020-03-30 | 2020-04-06 | 6d | 44d |  |  |
| 164 | 1.2.18.3 | MUROS INSTALACION ELECTRICA | 6d | 2020-03-30 | 2020-04-06 | 162FF | 2020-03-30 | 2020-04-06 | 6d | 44d |  |  |
| 165 | 1.2.18.4 | MUROS MOLDAJE | 6d | 2020-03-31 | 2020-04-07 | 162FS-5d | 2020-03-31 | 2020-04-07 | 6d | 0d | Moldaje [450 m2] | 2,205,000 |
| 166 | 1.2.18.5 | MUROS HORMIGON | 6d | 2020-04-01 | 2020-04-08 | 165FS-5d | 2020-04-01 | 2020-04-08 | 6d | 0d | Hormigón [250 m3] | 17,500,000 |
| 167 | 1.2.18.6 | LOSA MOLDAJE | 6d | 2020-04-02 | 2020-04-09 | 166FS-5d | 2020-04-02 | 2020-04-09 | 6d | 0d | Moldaje [120 m2] | 588,000 |
| 168 | 1.2.18.7 | LOSA FIERRO | 6d | 2020-04-03 | 2020-04-10 | 167FS-5d | 2020-04-03 | 2020-04-10 | 6d | 0d | Fierro [3500 kg] | 4,200,000 |
| 169 | 1.2.18.8 | LOSA INSTALACION SANITARIA | 6d | 2020-04-03 | 2020-04-10 | 168FF | 2020-04-03 | 2020-04-10 | 6d | 40d |  |  |
| 170 | 1.2.18.9 | LOSA INSTALACION ELECTRICA | 6d | 2020-04-03 | 2020-04-10 | 168FF | 2020-04-03 | 2020-04-10 | 6d | 40d |  |  |
| 171 | 1.2.18.10 | LOSA HORMIGON | 6d | 2020-04-06 | 2020-04-13 | 168FS-5d | 2020-04-06 | 2020-04-13 | 6d | 0d | Hormigón [300 m3] | 21,000,000 |
| 172 | 1.2.19 | **16° PISO** | 11d | 2020-04-13 | 2020-04-27 |  | 2020-04-13 | 2020-04-27 | 11d | 0d |  | 47,893,000 |
| 173 | 1.2.19.1 | MURO FIERRO | 6d | 2020-04-13 | 2020-04-20 | 171FS-1d | 2020-04-13 | 2020-04-20 | 6d | 0d | Fierro [2000 kg] | 2,400,000 |
| 174 | 1.2.19.2 | MUROS INSTALACION SANITARIA | 6d | 2020-04-13 | 2020-04-20 | 173FF | 2020-04-13 | 2020-04-20 | 6d | 34d |  |  |
| 175 | 1.2.19.3 | MUROS INSTALACION ELECTRICA | 6d | 2020-04-13 | 2020-04-20 | 173FF | 2020-04-13 | 2020-04-20 | 6d | 34d |  |  |
| 176 | 1.2.19.4 | MUROS MOLDAJE | 6d | 2020-04-14 | 2020-04-21 | 173FS-5d | 2020-04-14 | 2020-04-21 | 6d | 0d | Moldaje [450 m2] | 2,205,000 |
| 177 | 1.2.19.5 | MUROS HORMIGON | 6d | 2020-04-15 | 2020-04-22 | 176FS-5d | 2020-04-15 | 2020-04-22 | 6d | 0d | Hormigón [250 m3] | 17,500,000 |
| 178 | 1.2.19.6 | LOSA MOLDAJE | 6d | 2020-04-16 | 2020-04-23 | 177FS-5d | 2020-04-16 | 2020-04-23 | 6d | 0d | Moldaje [120 m2] | 588,000 |
| 179 | 1.2.19.7 | LOSA FIERRO | 6d | 2020-04-17 | 2020-04-24 | 178FS-5d | 2020-04-17 | 2020-04-24 | 6d | 0d | Fierro [3500 kg] | 4,200,000 |
| 180 | 1.2.19.8 | LOSA INSTALACION SANITARIA | 6d | 2020-04-17 | 2020-04-24 | 179FF | 2020-04-17 | 2020-04-24 | 6d | 30d |  |  |
| 181 | 1.2.19.9 | LOSA INSTALACION ELECTRICA | 6d | 2020-04-17 | 2020-04-24 | 179FF | 2020-04-17 | 2020-04-24 | 6d | 30d |  |  |
| 182 | 1.2.19.10 | LOSA HORMIGON | 6d | 2020-04-20 | 2020-04-27 | 179FS-5d | 2020-04-20 | 2020-04-27 | 6d | 0d | Hormigón [300 m3] | 21,000,000 |
| 183 | 1.2.20 | **17° PISO** | 11d | 2020-04-27 | 2020-05-11 |  | 2020-04-27 | 2020-05-11 | 11d | 0d |  | 47,893,000 |
| 184 | 1.2.20.1 | MURO FIERRO | 6d | 2020-04-27 | 2020-05-04 | 182FS-1d | 2020-04-27 | 2020-05-04 | 6d | 0d | Fierro [2000 kg] | 2,400,000 |
| 185 | 1.2.20.2 | MUROS INSTALACION SANITARIA | 6d | 2020-04-27 | 2020-05-04 | 184FF | 2020-04-27 | 2020-05-04 | 6d | 24d |  |  |
| 186 | 1.2.20.3 | MUROS INSTALACION ELECTRICA | 6d | 2020-04-27 | 2020-05-04 | 184FF | 2020-04-27 | 2020-05-04 | 6d | 24d |  |  |
| 187 | 1.2.20.4 | MUROS MOLDAJE | 6d | 2020-04-28 | 2020-05-05 | 184FS-5d | 2020-04-28 | 2020-05-05 | 6d | 0d | Moldaje [450 m2] | 2,205,000 |
| 188 | 1.2.20.5 | MUROS HORMIGON | 6d | 2020-04-29 | 2020-05-06 | 187FS-5d | 2020-04-29 | 2020-05-06 | 6d | 0d | Hormigón [250 m3] | 17,500,000 |
| 189 | 1.2.20.6 | LOSA MOLDAJE | 6d | 2020-04-30 | 2020-05-07 | 188FS-5d | 2020-04-30 | 2020-05-07 | 6d | 0d | Moldaje [120 m2] | 588,000 |
| 190 | 1.2.20.7 | LOSA FIERRO | 6d | 2020-05-01 | 2020-05-08 | 189FS-5d | 2020-05-01 | 2020-05-08 | 6d | 0d | Fierro [3500 kg] | 4,200,000 |
| 191 | 1.2.20.8 | LOSA INSTALACION SANITARIA | 6d | 2020-05-01 | 2020-05-08 | 190FF | 2020-05-01 | 2020-05-08 | 6d | 20d |  |  |
| 192 | 1.2.20.9 | LOSA INSTALACION ELECTRICA | 6d | 2020-05-01 | 2020-05-08 | 190FF | 2020-05-01 | 2020-05-08 | 6d | 20d |  |  |
| 193 | 1.2.20.10 | LOSA HORMIGON | 6d | 2020-05-04 | 2020-05-11 | 190FS-5d | 2020-05-04 | 2020-05-11 | 6d | 0d | Hormigón [300 m3] | 21,000,000 |

| ID | WBS | Task | Duration | Start | Finish | Predecessors | Baseline start | Baseline finish | Baseline duration | Total slack | Resources | Cost |
| --- | --- | --- | --- | --- | --- | --- | --- | --- | --- | --- | --- | --- |
| 194 | 1.2.21 | **18° PISO** | 11d | 2020-05-11 | 2020-05-25 |  | 2020-05-11 | 2020-05-25 | 11d | 0d |  | 47,893,000 |
| 195 | 1.2.21.1 | MURO FIERRO | 6d | 2020-05-11 | 2020-05-18 | 193FS-1d | 2020-05-11 | 2020-05-18 | 6d | 0d | Fierro [2000 kg] | 2,400,000 |
| 196 | 1.2.21.2 | MUROS INSTALACION SANITARIA | 6d | 2020-05-11 | 2020-05-18 | 195FF | 2020-05-11 | 2020-05-18 | 6d | 14d |  |  |
| 197 | 1.2.21.3 | MUROS INSTALACION ELECTRICA | 6d | 2020-05-11 | 2020-05-18 | 195FF | 2020-05-11 | 2020-05-18 | 6d | 14d |  |  |
| 198 | 1.2.21.4 | MUROS MOLDAJE | 6d | 2020-05-12 | 2020-05-19 | 195FS-5d | 2020-05-12 | 2020-05-19 | 6d | 0d | Moldaje [450 m2] | 2,205,000 |
| 199 | 1.2.21.5 | MUROS HORMIGON | 6d | 2020-05-13 | 2020-05-20 | 198FS-5d | 2020-05-13 | 2020-05-20 | 6d | 0d | Hormigón [250 m3] | 17,500,000 |
| 200 | 1.2.21.6 | LOSA MOLDAJE | 6d | 2020-05-14 | 2020-05-21 | 199FS-5d | 2020-05-14 | 2020-05-21 | 6d | 0d | Moldaje [120 m2] | 588,000 |
| 201 | 1.2.21.7 | LOSA FIERRO | 6d | 2020-05-15 | 2020-05-22 | 200FS-5d | 2020-05-15 | 2020-05-22 | 6d | 0d | Fierro [3500 kg] | 4,200,000 |
| 202 | 1.2.21.8 | LOSA INSTALACION SANITARIA | 6d | 2020-05-15 | 2020-05-22 | 201FF | 2020-05-15 | 2020-05-22 | 6d | 10d |  |  |
| 203 | 1.2.21.9 | LOSA INSTALACION ELECTRICA | 6d | 2020-05-15 | 2020-05-22 | 201FF | 2020-05-15 | 2020-05-22 | 6d | 10d |  |  |
| 204 | 1.2.21.10 | LOSA HORMIGON | 6d | 2020-05-18 | 2020-05-25 | 201FS-5d | 2020-05-18 | 2020-05-25 | 6d | 0d | Hormigón [300 m3] | 21,000,000 |
| 205 | 1.2.22 | **SALA DE MAQUINAS** | 11d | 2020-05-21 | 2020-06-04 |  | 2020-05-21 | 2020-06-04 | 11d | 1d |  | 47,893,000 |
| 206 | 1.2.22.1 | MURO FIERRO | 4d | 2020-05-25 | 2020-05-28 | 204FS-1d | 2020-05-25 | 2020-05-28 | 4d | 0d | Fierro [2000 kg] | 2,400,000 |
| 207 | 1.2.22.2 | MUROS INSTALACION SANITARIA | 6d | 2020-05-21 | 2020-05-28 | 206FF | 2020-05-21 | 2020-05-28 | 6d | 6d |  |  |
| 208 | 1.2.22.3 | MUROS INSTALACION ELECTRICA | 6d | 2020-05-21 | 2020-05-28 | 206FF | 2020-05-21 | 2020-05-28 | 6d | 6d |  |  |
| 209 | 1.2.22.4 | MUROS MOLDAJE | 4d | 2020-05-26 | 2020-05-29 | 206FS-3d | 2020-05-26 | 2020-05-29 | 4d | 0d | Moldaje [450 m2] | 2,205,000 |
| 210 | 1.2.22.5 | MUROS HORMIGON | 4d | 2020-05-27 | 2020-06-01 | 209FS-3d | 2020-05-27 | 2020-06-01 | 4d | 0d | Hormigón [250 m3] | 17,500,000 |
| 211 | 1.2.22.6 | LOSA MOLDAJE | 4d | 2020-05-28 | 2020-06-02 | 210FS-3d | 2020-05-28 | 2020-06-02 | 4d | 0d | Moldaje [120 m2] | 588,000 |
| 212 | 1.2.22.7 | LOSA FIERRO | 4d | 2020-05-29 | 2020-06-03 | 211FS-3d | 2020-05-29 | 2020-06-03 | 4d | 0d | Fierro [3500 kg] | 4,200,000 |
| 213 | 1.2.22.8 | LOSA INSTALACION SANITARIA | 6d | 2020-05-27 | 2020-06-03 | 212FF | 2020-05-27 | 2020-06-03 | 6d | 2d |  |  |
| 214 | 1.2.22.9 | LOSA INSTALACION ELECTRICA | 6d | 2020-05-27 | 2020-06-03 | 212FF | 2020-05-27 | 2020-06-03 | 6d | 2d |  |  |
| 215 | 1.2.22.10 | LOSA HORMIGON | 4d | 2020-06-01 | 2020-06-04 | 212FS-3d | 2020-06-01 | 2020-06-04 | 4d | 0d | Hormigón [300 m3] | 21,000,000 |
| 216 | 1.2.23 | **REMATES DE OBRA GRUESA** | 6d | 2020-05-29 | 2020-06-05 |  | 2020-05-29 | 2020-06-05 | 6d | 0d |  |  |
| 217 | 1.2.23.1 | REMATES DE OBRA GRUESA | 6d | 2020-05-29 | 2020-06-05 | 215FS-5d | 2020-05-29 | 2020-06-05 | 6d | 0d |  |  |
