# Project CC

Schedule from MS Project, 2019-01-23 to 2019-04-23, 9 hours a day.

## Calendars

- Estándar: Mon-Fri 08:00-13:00, 14:00-18:00; Sat-Sun off.

## Schedule

| ID | WBS | Task | Duration | Start | Finish | Predecessors | Total slack | Free slack |
| --- | --- | --- | --- | --- | --- | --- | --- | --- |
| 1 | 1 | **Proyecto Hola** | 65d | 2019-01-23 | 2019-04-23 |  | 0d |  |
| 2 | 1.1 | **Terminaciones** | 65d | 2019-01-23 | 2019-04-23 |  | 0d |  |
| 3 | 1.1.1 | **Terminaciones Depto** | 65d | 2019-01-23 | 2019-04-23 |  | 0d |  |
| 4 | 1.1.1.1 | **Piso 1** | 25d | 2019-01-23 | 2019-02-26 |  | 0d |  |
| 5 | 1.1.1.1.1 | Descarachado y Pulido | 10d | 2019-01-23 | 2019-02-05 |  | 0d |  |
| 6 | 1.1.1.1.2 | Estructura de tabique y primera cara | 10d | 2019-01-25 | 2019-02-07 | 5SS+2d | 40d | 0d |
| 7 | 1.1.1.1.3 | Tabique 2da cara | 10d | 2019-01-30 | 2019-02-12 | 6SS+3d | 40d | 0d |
| 8 | 1.1.1.1.4 | Huinchas en tabiques | 10d | 2019-02-01 | 2019-02-14 | 7SS+2d | 40d | 0d |
| 9 | 1.1.1.1.5 | Cornisas | 10d | 2019-02-01 | 2019-02-14 | 8SS | 40d | 0d |
| 10 | 1.1.1.1.6 | Ceramicas y porcelanato | 10d | 2019-02-12 | 2019-02-25 | 9SS+7d | 40d | 0d |
| 11 | 1.1.1.1.7 | Remate de yesos | 10d | 2019-02-13 | 2019-02-26 | 10SS+1d | 40d |  |
| 12 | 1.1.1.2 | **Piso 2** | 25d | 2019-01-30 | 2019-03-05 |  | 0d |  |
| 13 | 1.1.1.2.1 | Descarachado y Pulido | 10d | 2019-01-30 | 2019-02-12 | 5SS+5d | 0d |  |
| 14 | 1.1.1.2.2 | Estructura de tabique y primera cara | 10d | 2019-02-01 | 2019-02-14 | 13SS+2d | 0d |  |
| 15 | 1.1.1.2.3 | Tabique 2da cara | 10d | 2019-02-06 | 2019-02-19 | 14SS+3d | 0d |  |
| 16 | 1.1.1.2.4 | Huinchas en tabiques | 10d | 2019-02-08 | 2019-02-21 | 15SS+2d | 0d |  |
| 17 | 1.1.1.2.5 | Cornisas | 10d | 2019-02-08 | 2019-02-21 | 16SS | 0d |  |
| 18 | 1.1.1.2.6 | Ceramicas y porcelanato | 10d | 2019-02-19 | 2019-03-04 | 17SS+7d | 0d |  |
| 19 | 1.1.1.2.7 | Remate de yesos | 10d | 2019-02-20 | 2019-03-05 | 18SS+1d | 0d |  |
| 20 | 1.1.1.3 | **Piso 3** | 35d | 2019-03-06 | 2019-04-23 | 12 | 0d |  |
| 21 | 1.1.1.3.1 | Descarachado y Pulido | 10d | 2019-03-06 | 2019-03-19 | 13SS+5d | 0d |  |
| 22 | 1.1.1.3.2 | Estructura de tabique y primera cara | 10d | 2019-03-08 | 2019-03-21 | 21SS+2d | 0d |  |
| 23 | 1.1.1.3.3 | Tabique 2da cara | 10d | 2019-03-13 | 2019-03-26 | 22SS+3d | 0d |  |
| 24 | 1.1.1.3.4 | Huinchas en tabiques | 10d | 2019-03-15 | 2019-03-28 | 23SS+2d | 0d |  |
| 25 | 1.1.1.3.5 | Cornisas | 10d | 2019-03-29 | 2019-04-11 | 24 | 0d |  |
| 26 | 1.1.1.3.6 | Ceramicas y porcelanato | 10d | 2019-04-09 | 2019-04-22 | 25SS+7d | 0d |  |
| 27 | 1.1.1.3.7 | Remate de yesos | 10d | 2019-04-10 | 2019-04-23 | 26SS+1d | 0d |  |
