# Project CF

Schedule from MS Project, 2019-01-23 to 2019-03-15, 9 hours a day.

## Calendars

- Estándar: Mon-Fri 08:00-13:00, 14:00-18:00; Sat-Sun off.

## Schedule

| ID | WBS | Task | Duration | Start | Finish | Predecessors | Total slack | Free slack |
| --- | --- | --- | --- | --- | --- | --- | --- | --- |
| 1 | 1 | **Proyecto Hola** | 38d | 2019-01-23 | 2019-03-15 |  | 0d |  |
| 2 | 1.1 | **Terminaciones** | 38d | 2019-01-23 | 2019-03-15 |  | 0d |  |
| 3 | 1.1.1 | **Terminaciones Depto** | 38d | 2019-01-23 | 2019-03-15 |  | 0d |  |
| 4 | 1.1.1.1 | **Piso 1** | 24d | 2019-01-23 | 2019-02-25 |  | 0d |  |
| 5 | 1.1.1.1.1 | Descarachado y Pulido | 10d | 2019-01-23 | 2019-02-05 |  | 0d |  |
| 6 | 1.1.1.1.2 | Estructura de tabique y primera cara | 10d | 2019-01-30 | 2019-02-12 | 5SF+15d | 14d | 0d |
| 7 | 1.1.1.1.3 | Tabique 2da cara | 10d | 2019-02-01 | 2019-02-14 | 6SF+12d | 14d | 0d |
| 8 | 1.1.1.1.4 | Huinchas en tabiques | 10d | 2019-02-01 | 2019-02-14 | 7SF+10d | 14d | 0d |
| 9 | 1.1.1.1.5 | Cornisas | 10d | 2019-02-04 | 2019-02-15 | 8SF+11d | 14d | 0d |
| 10 | 1.1.1.1.6 | Ceramicas y porcelanato | 10d | 2019-02-11 | 2019-02-22 | 9SF+15d | 14d | 0d |
| 11 | 1.1.1.1.7 | Remate de yesos | 10d | 2019-02-12 | 2019-02-25 | 10SF+11d | 14d |  |
| 12 | 1.1.1.2 | **Piso 2** | 24d | 2019-02-01 | 2019-03-06 |  | 0d |  |
| 13 | 1.1.1.2.1 | Descarachado y Pulido | 10d | 2019-02-01 | 2019-02-14 | 5SF+17d | 0d |  |
| 14 | 1.1.1.2.2 | Estructura de tabique y primera cara | 10d | 2019-02-08 | 2019-02-21 | 13SF+15d | 7d | 0d |
| 15 | 1.1.1.2.3 | Tabique 2da cara | 10d | 2019-02-12 | 2019-02-25 | 14SF+12d | 7d | 0d |
| 16 | 1.1.1.2.4 | Huinchas en tabiques | 10d | 2019-02-12 | 2019-02-25 | 15SF+10d | 7d | 0d |
| 17 | 1.1.1.2.5 | Cornisas | 10d | 2019-02-13 | 2019-02-26 | 16SF+11d | 7d | 0d |
| 18 | 1.1.1.2.6 | Ceramicas y porcelanato | 10d | 2019-02-20 | 2019-03-05 | 17SF+15d | 7d | 0d |
| 19 | 1.1.1.2.7 | Remate de yesos | 10d | 2019-02-21 | 2019-03-06 | 18SF+11d | 7d |  |
| 20 | 1.1.1.3 | **Piso 3** | 24d | 2019-02-12 | 2019-03-15 |  | 0d |  |
| 21 | 1.1.1.3.1 | Descarachado y Pulido | 10d | 2019-02-12 | 2019-02-25 | 13SF+17d | 0d |  |
| 22 | 1.1.1.3.2 | Estructura de tabique y primera cara | 10d | 2019-02-19 | 2019-03-04 | 21SF+15d | 0d |  |
| 23 | 1.1.1.3.3 | Tabique 2da cara | 10d | 2019-02-21 | 2019-03-06 | 22SF+12d | 0d |  |
| 24 | 1.1.1.3.4 | Huinchas en tabiques | 10d | 2019-02-21 | 2019-03-06 | 23SF+10d | 0d |  |
| 25 | 1.1.1.3.5 | Cornisas | 10d | 2019-02-22 | 2019-03-07 | 24SF+11d | 0d |  |
| 26 | 1.1.1.3.6 | Ceramicas y porcelanato | 10d | 2019-03-01 | 2019-03-14 | 25SF+15d | 0d |  |
| 27 | 1.1.1.3.7 | Remate de yesos | 10d | 2019-03-04 | 2019-03-15 | 26SF+11d | 0d |  |
