# Ritmo_por piso_CF

Schedule from MS Project, 2018-12-17 to 2019-03-07, costs in $.

## Calendars

- Estándar: Mon-Fri 09:00-13:00, 15:00-19:00; Sat-Sun off.

## Schedule

| ID | WBS | Task | Duration | Start | Finish | Predecessors | Total slack | Free slack | Constraint | Cost |
| --- | --- | --- | --- | --- | --- | --- | --- | --- | --- | --- |
| 1 | 1 | **Edificio IPSUM** | 59d | 2018-12-17 | 2019-03-07 |  | 0d |  |  | 10,250,000 |
| 2 | 1.1 | **Terminaciones** | 59d | 2018-12-17 | 2019-03-07 |  | 0d |  |  | 10,250,000 |
| 3 | 1.1.1 | **Piso 1** | 39d | 2018-12-17 | 2019-02-07 |  | 0d |  |  | 2,050,000 |
| 4 | 1.1.1.1 | 1. Descarachado | 5d | 2018-12-17 | 2018-12-21 |  | 0d |  | start no earlier than 2018-12-17 | 250,000 |
| 5 | 1.1.1.2 | 2. Yeso | 8d | 2018-12-20 | 2018-12-31 | 4SF+11d | 20d | 0d |  | 350,000 |
| 6 | 1.1.1.3 | 3. Tabiques | 10d | 2018-12-24 | 2019-01-04 | 5SF+12d | 20d | 0d |  | 400,000 |
| 7 | 1.1.1.4 | 4. Tabiques 2 cara | 14d | 2019-01-01 | 2019-01-18 | 6SF+20d | 20d | 0d |  | 400,000 |
| 8 | 1.1.1.5 | 5. pintura | 15d | 2019-01-14 | 2019-02-01 | 7SF+24d | 20d | 0d |  | 450,000 |
| 9 | 1.1.1.6 | 6. cierre | 10d | 2019-01-25 | 2019-02-07 | 8SF+19d | 20d |  |  | 200,000 |
| 10 | 1.1.2 | **Piso 2** | 39d | 2018-12-24 | 2019-02-14 |  | 0d |  |  | 2,050,000 |
| 11 | 1.1.2.1 | 1. Descarachado | 5d | 2018-12-24 | 2018-12-28 | 4 | 0d |  |  | 250,000 |
| 12 | 1.1.2.2 | 2. Yeso | 8d | 2018-12-27 | 2019-01-07 | 11SF+11d | 15d | 0d |  | 350,000 |
| 13 | 1.1.2.3 | 3. Tabiques | 10d | 2018-12-31 | 2019-01-11 | 12SF+12d | 15d | 0d |  | 400,000 |
| 14 | 1.1.2.4 | 4. Tabiques 2 cara | 14d | 2019-01-08 | 2019-01-25 | 13SF+20d | 15d | 0d |  | 400,000 |
| 15 | 1.1.2.5 | 5. pintura | 15d | 2019-01-21 | 2019-02-08 | 14SF+24d | 15d | 0d |  | 450,000 |
| 16 | 1.1.2.6 | 6. cierre | 10d | 2019-02-01 | 2019-02-14 | 15SF+19d | 15d |  |  | 200,000 |
| 17 | 1.1.3 | **Piso 3** | 39d | 2018-12-31 | 2019-02-21 |  | 0d |  |  | 2,050,000 |
| 18 | 1.1.3.1 | 1. Descarachado | 5d | 2018-12-31 | 2019-01-04 | 11 | 0d |  |  | 250,000 |
| 19 | 1.1.3.2 | 2. Yeso | 8d | 2019-01-03 | 2019-01-14 | 18SF+11d | 10d | 0d |  | 350,000 |
| 20 | 1.1.3.3 | 3. Tabiques | 10d | 2019-01-07 | 2019-01-18 | 19SF+12d | 10d | 0d |  | 400,000 |
| 21 | 1.1.3.4 | 4. Tabiques 2 cara | 14d | 2019-01-15 | 2019-02-01 | 20SF+20d | 10d | 0d |  | 400,000 |
| 22 | 1.1.3.5 | 5. pintura | 15d | 2019-01-28 | 2019-02-15 | 21SF+24d | 10d | 0d |  | 450,000 |
| 23 | 1.1.3.6 | 6. cierre | 10d | 2019-02-08 | 2019-02-21 | 22SF+19d | 10d |  |  | 200,000 |
| 24 | 1.1.4 | **Piso 4** | 39d | 2019-01-07 | 2019-02-28 |  | 0d |  |  | 2,050,000 |
| 25 | 1.1.4.1 | 1. Descarachado | 5d | 2019-01-07 | 2019-01-11 | 18 | 0d |  |  | 250,000 |
| 26 | 1.1.4.2 | 2. Yeso | 8d | 2019-01-10 | 2019-01-21 | 25SF+11d | 5d | 0d |  | 350,000 |
| 27 | 1.1.4.3 | 3. Tabiques | 10d | 2019-01-14 | 2019-01-25 | 26SF+12d | 5d | 0d |  | 400,000 |
| 28 | 1.1.4.4 | 4. Tabiques 2 cara | 14d | 2019-01-22 | 2019-02-08 | 27SF+20d | 5d | 0d |  | 400,000 |
| 29 | 1.1.4.5 | 5. pintura | 15d | 2019-02-04 | 2019-02-22 | 28SF+24d | 5d | 0d |  | 450,000 |
| 30 | 1.1.4.6 | 6. cierre | 10d | 2019-02-15 | 2019-02-28 | 29SF+19d | 5d |  |  | 200,000 |

| ID | WBS | Task | Duration | Start | Finish | Predecessors | Total slack | Cost |
| --- | --- | --- | --- | --- | --- | --- | --- | --- |
| 31 | 1.1.5 | **Piso 5** | 39d | 2019-01-14 | 2019-03-07 |  | 0d | 2,050,000 |
| 32 | 1.1.5.1 | 1. Descarachado | 5d | 2019-01-14 | 2019-01-18 | 25 | 0d | 250,000 |
| 33 | 1.1.5.2 | 2. Yeso | 8d | 2019-01-17 | 2019-01-28 | 32SF+11d | 0d | 350,000 |
| 34 | 1.1.5.3 | 3. Tabiques | 10d | 2019-01-21 | 2019-02-01 | 33SF+12d | 0d | 400,000 |
| 35 | 1.1.5.4 | 4. Tabiques 2 cara | 14d | 2019-01-29 | 2019-02-15 | 34SF+20d | 0d | 400,000 |
| 36 | 1.1.5.5 | 5. pintura | 15d | 2019-02-11 | 2019-03-01 | 35SF+24d | 0d | 450,000 |
| 37 | 1.1.5.6 | 6. cierre | 10d | 2019-02-22 | 2019-03-07 | 36SF+19d | 0d | 200,000 |
