# Ritmo_por piso

Schedule from MS Project, 2018-01-22 to 2018-03-29, costs in $.

## Calendars

- Estándar: Mon-Fri 09:00-13:00, 15:00-19:00; Sat-Sun off.

## Schedule

| ID | WBS | Task | Duration | Start | Finish | Predecessors | Total slack | Free slack | Constraint | Cost |
| --- | --- | --- | --- | --- | --- | --- | --- | --- | --- | --- |
| 1 | 1 | **Edificio IPSUM** | 49d | 2018-01-22 | 2018-03-29 |  | 0d |  |  | 10,250,000 |
| 2 | 1.1 | **Terminaciones** | 49d | 2018-01-22 | 2018-03-29 |  | 0d |  |  | 10,250,000 |
| 3 | 1.1.1 | **Piso 1** | 28d | 2018-01-22 | 2018-02-28 |  | 0d |  |  | 2,050,000 |
| 4 | 1.1.1.1 | 1. Descarachado | 5d | 2018-01-22 | 2018-01-26 |  | 0d |  | start no earlier than 2018-01-22 | 250,000 |
| 5 | 1.1.1.2 | 2. Yeso | 8d | 2018-01-24 | 2018-02-02 | 4SS+2d | 21d | 0d |  | 350,000 |
| 6 | 1.1.1.3 | 3. Tabiques | 10d | 2018-01-29 | 2018-02-09 | 5SS+3d | 21d | 0d |  | 400,000 |
| 7 | 1.1.1.4 | 4. Tabiques 2 cara | 14d | 2018-02-02 | 2018-02-21 | 6SS+4d | 21d | 0d |  | 400,000 |
| 8 | 1.1.1.5 | 5. pintura | 15d | 2018-02-08 | 2018-02-28 | 7SS+4d | 21d | 0d |  | 450,000 |
| 9 | 1.1.1.6 | 6. cierre | 10d | 2018-02-14 | 2018-02-27 | 8SS+4d | 22d |  |  | 200,000 |
| 10 | 1.1.2 | **Piso 2** | 29d | 2018-01-29 | 2018-03-08 |  | 0d |  |  | 2,050,000 |
| 11 | 1.1.2.1 | 1. Descarachado | 5d | 2018-01-29 | 2018-02-02 | 4 | 0d |  |  | 250,000 |
| 12 | 1.1.2.2 | 2. Yeso | 8d | 2018-02-01 | 2018-02-12 | 11SS+3d | 15d | 0d |  | 350,000 |
| 13 | 1.1.2.3 | 3. Tabiques | 10d | 2018-02-06 | 2018-02-19 | 12SS+3d | 15d | 0d |  | 400,000 |
| 14 | 1.1.2.4 | 4. Tabiques 2 cara | 14d | 2018-02-12 | 2018-03-01 | 13SS+4d | 15d | 0d |  | 400,000 |
| 15 | 1.1.2.5 | 5. pintura | 15d | 2018-02-16 | 2018-03-08 | 14SS+4d | 15d | 0d |  | 450,000 |
| 16 | 1.1.2.6 | 6. cierre | 10d | 2018-02-22 | 2018-03-07 | 15SS+4d | 16d |  |  | 200,000 |
| 17 | 1.1.3 | **Piso 3** | 29d | 2018-02-05 | 2018-03-15 |  | 0d |  |  | 2,050,000 |
| 18 | 1.1.3.1 | 1. Descarachado | 5d | 2018-02-05 | 2018-02-09 | 11 | 0d |  |  | 250,000 |
| 19 | 1.1.3.2 | 2. Yeso | 8d | 2018-02-08 | 2018-02-19 | 18SS+3d | 10d | 0d |  | 350,000 |
| 20 | 1.1.3.3 | 3. Tabiques | 10d | 2018-02-13 | 2018-02-26 | 19SS+3d | 10d | 0d |  | 400,000 |
| 21 | 1.1.3.4 | 4. Tabiques 2 cara | 14d | 2018-02-19 | 2018-03-08 | 20SS+4d | 10d | 0d |  | 400,000 |
| 22 | 1.1.3.5 | 5. pintura | 15d | 2018-02-23 | 2018-03-15 | 21SS+4d | 10d | 0d |  | 450,000 |
| 23 | 1.1.3.6 | 6. cierre | 10d | 2018-03-01 | 2018-03-14 | 22SS+4d | 11d |  |  | 200,000 |
| 24 | 1.1.4 | **Piso 4** | 29d | 2018-02-12 | 2018-03-22 |  | 0d |  |  | 2,050,000 |
| 25 | 1.1.4.1 | 1. Descarachado | 5d | 2018-02-12 | 2018-02-16 | 18 | 0d |  |  | 250,000 |
| 26 | 1.1.4.2 | 2. Yeso | 8d | 2018-02-15 | 2018-02-26 | 25SS+3d | 5d | 0d |  | 350,000 |
| 27 | 1.1.4.3 | 3. Tabiques | 10d | 2018-02-20 | 2018-03-05 | 26SS+3d | 5d | 0d |  | 400,000 |
| 28 | 1.1.4.4 | 4. Tabiques 2 cara | 14d | 2018-02-26 | 2018-03-15 | 27SS+4d | 5d | 0d |  | 400,000 |
| 29 | 1.1.4.5 | 5. pintura | 15d | 2018-03-02 | 2018-03-22 | 28SS+4d | 5d | 0d |  | 450,000 |
| 30 | 1.1.4.6 | 6. cierre | 10d | 2018-03-08 | 2018-03-21 | 29SS+4d | 6d |  |  | 200,000 |

| ID | WBS | Task | Duration | Start | Finish | Predecessors | Total slack | Cost |
| --- | --- | --- | --- | --- | --- | --- | --- | --- |
| 31 | 1.1.5 | **Piso 5** | 29d | 2018-02-19 | 2018-03-29 |  | 0d | 2,050,000 |
| 32 | 1.1.5.1 | 1. Descarachado | 5d | 2018-02-19 | 2018-02-23 | 25 | 0d | 250,000 |
| 33 | 1.1.5.2 | 2. Yeso | 8d | 2018-02-22 | 2018-03-05 | 32SS+3d | 0d | 350,000 |
| 34 | 1.1.5.3 | 3. Tabiques | 10d | 2018-02-27 | 2018-03-12 | 33SS+3d | 0d | 400,000 |
| 35 | 1.1.5.4 | 4. Tabiques 2 cara | 14d | 2018-03-05 | 2018-03-22 | 34SS+4d | 0d | 400,000 |
| 36 | 1.1.5.5 | 5. pintura | 15d | 2018-03-09 | 2018-03-29 | 35SS+4d | 0d | 450,000 |
| 37 | 1.1.5.6 | 6. cierre | 10d | 2018-03-15 | 2018-03-28 | 36SS+4d | 1d | 200,000 |
