# Ritmo_por piso

Schedule from MS Project, 2018-12-24 to 2019-02-28, costs in $.

## Calendars

- Estándar: Mon-Fri 09:00-13:00, 15:00-19:00; Sat-Sun off.

## Schedule

| ID | WBS | Task | Duration | Start | Finish | Predecessors | Total slack | Free slack | Constraint | Cost |
| --- | --- | --- | --- | --- | --- | --- | --- | --- | --- | --- |
| 1 | 1 | **Edificio IPSUM** | 49d | 2018-12-24 | 2019-02-28 |  | 0d |  |  | 10,250,000 |
| 2 | 1.1 | **Terminaciones** | 49d | 2018-12-24 | 2019-02-28 |  | 0d |  |  | 10,250,000 |
| 3 | 1.1.1 | **Piso 1** | 28d | 2018-12-24 | 2019-01-30 |  | 0d |  |  | 2,050,000 |
| 4 | 1.1.1.1 | 1. Descarachado | 5d | 2018-12-24 | 2018-12-28 |  | 0d |  | start no earlier than 2018-12-24 | 250,000 |
| 5 | 1.1.1.2 | 2. Yeso | 8d | 2018-12-26 | 2019-01-04 | 4SS+2d | 21d | 0d |  | 350,000 |
| 6 | 1.1.1.3 | 3. Tabiques | 10d | 2018-12-31 | 2019-01-11 | 5SS+3d | 21d | 0d |  | 400,000 |
| 7 | 1.1.1.4 | 4. Tabiques 2 cara | 14d | 2019-01-04 | 2019-01-23 | 6SS+4d | 21d | 0d |  | 400,000 |
| 8 | 1.1.1.5 | 5. pintura | 15d | 2019-01-10 | 2019-01-30 | 7SS+4d | 21d | 0d |  | 450,000 |
| 9 | 1.1.1.6 | 6. cierre | 10d | 2019-01-16 | 2019-01-29 | 8SS+4d | 22d |  |  | 200,000 |
| 10 | 1.1.2 | **Piso 2** | 29d | 2018-12-31 | 2019-02-07 |  | 0d |  |  | 2,050,000 |
| 11 | 1.1.2.1 | 1. Descarachado | 5d | 2018-12-31 | 2019-01-04 | 4 | 0d |  |  | 250,000 |
| 12 | 1.1.2.2 | 2. Yeso | 8d | 2019-01-03 | 2019-01-14 | 11SS+3d | 15d | 0d |  | 350,000 |
| 13 | 1.1.2.3 | 3. Tabiques | 10d | 2019-01-08 | 2019-01-21 | 12SS+3d | 15d | 0d |  | 400,000 |
| 14 | 1.1.2.4 | 4. Tabiques 2 cara | 14d | 2019-01-14 | 2019-01-31 | 13SS+4d | 15d | 0d |  | 400,000 |
| 15 | 1.1.2.5 | 5. pintura | 15d | 2019-01-18 | 2019-02-07 | 14SS+4d | 15d | 0d |  | 450,000 |
| 16 | 1.1.2.6 | 6. cierre | 10d | 2019-01-24 | 2019-02-06 | 15SS+4d | 16d |  |  | 200,000 |
| 17 | 1.1.3 | **Piso 3** | 29d | 2019-01-07 | 2019-02-14 |  | 0d |  |  | 2,050,000 |
| 18 | 1.1.3.1 | 1. Descarachado | 5d | 2019-01-07 | 2019-01-11 | 11 | 0d |  |  | 250,000 |
| 19 | 1.1.3.2 | 2. Yeso | 8d | 2019-01-10 | 2019-01-21 | 18SS+3d | 10d | 0d |  | 350,000 |
| 20 | 1.1.3.3 | 3. Tabiques | 10d | 2019-01-15 | 2019-01-28 | 19SS+3d | 10d | 0d |  | 400,000 |
| 21 | 1.1.3.4 | 4. Tabiques 2 cara | 14d | 2019-01-21 | 2019-02-07 | 20SS+4d | 10d | 0d |  | 400,000 |
| 22 | 1.1.3.5 | 5. pintura | 15d | 2019-01-25 | 2019-02-14 | 21SS+4d | 10d | 0d |  | 450,000 |
| 23 | 1.1.3.6 | 6. cierre | 10d | 2019-01-31 | 2019-02-13 | 22SS+4d | 11d |  |  | 200,000 |
| 24 | 1.1.4 | **Piso 4** | 29d | 2019-01-14 | 2019-02-21 |  | 0d |  |  | 2,050,000 |
| 25 | 1.1.4.1 | 1. Descarachado | 5d | 2019-01-14 | 2019-01-18 | 18 | 0d |  |  | 250,000 |
| 26 | 1.1.4.2 | 2. Yeso | 8d | 2019-01-17 | 2019-01-28 | 25SS+3d | 5d | 0d |  | 350,000 |
| 27 | 1.1.4.3 | 3. Tabiques | 10d | 2019-01-22 | 2019-02-04 | 26SS+3d | 5d | 0d |  | 400,000 |
| 28 | 1.1.4.4 | 4. Tabiques 2 cara | 14d | 2019-01-28 | 2019-02-14 | 27SS+4d | 5d | 0d |  | 400,000 |
| 29 | 1.1.4.5 | 5. pintura | 15d | 2019-02-01 | 2019-02-21 | 28SS+4d | 5d | 0d |  | 450,000 |
| 30 | 1.1.4.6 | 6. cierre | 10d | 2019-02-07 | 2019-02-20 | 29SS+4d | 6d |  |  | 200,000 |

| ID | WBS | Task | Duration | Start | Finish | Predecessors | Total slack | Cost |
| --- | --- | --- | --- | --- | --- | --- | --- | --- |
| 31 | 1.1.5 | **Piso 5** | 29d | 2019-01-21 | 2019-02-28 |  | 0d | 2,050,000 |
| 32 | 1.1.5.1 | 1. Descarachado | 5d | 2019-01-21 | 2019-01-25 | 25 | 0d | 250,000 |
| 33 | 1.1.5.2 | 2. Yeso | 8d | 2019-01-24 | 2019-02-04 | 32SS+3d | 0d | 350,000 |
| 34 | 1.1.5.3 | 3. Tabiques | 10d | 2019-01-29 | 2019-02-11 | 33SS+3d | 0d | 400,000 |
| 35 | 1.1.5.4 | 4. Tabiques 2 cara | 14d | 2019-02-04 | 2019-02-21 | 34SS+4d | 0d | 400,000 |
| 36 | 1.1.5.5 | 5. pintura | 15d | 2019-02-08 | 2019-02-28 | 35SS+4d | 0d | 450,000 |
| 37 | 1.1.5.6 | 6. cierre | 10d | 2019-02-14 | 2019-02-27 | 36SS+4d | 1d | 200,000 |
