# Ritmo_por piso_FC

Schedule from MS Project, 2018-12-17 to 2019-04-09, costs in $.

## Calendars

- Estándar: Mon-Fri 09:00-13:00, 15:00-19:00; Sat-Sun off.

## Schedule

| ID | WBS | Task | Duration | Start | Finish | Predecessors | Total slack | Free slack | Constraint | Cost |
| --- | --- | --- | --- | --- | --- | --- | --- | --- | --- | --- |
| 1 | 1 | **Edificio IPSUM** | 82d | 2018-12-17 | 2019-04-09 |  | 0d |  |  | 10,250,000 |
| 2 | 1.1 | **Terminaciones** | 82d | 2018-12-17 | 2019-04-09 |  | 0d |  |  | 10,250,000 |
| 3 | 1.1.1 | **Piso 1** | 62d | 2018-12-17 | 2019-03-12 |  | 0d |  |  | 2,050,000 |
| 4 | 1.1.1.1 | 1. Descarachado | 5d | 2018-12-17 | 2018-12-21 |  | 0d |  | start no earlier than 2018-12-17 | 250,000 |
| 5 | 1.1.1.2 | 2. Yeso | 8d | 2018-12-19 | 2018-12-28 | 4FF+5d | 20d | 0d |  | 350,000 |
| 6 | 1.1.1.3 | 3. Tabiques | 10d | 2018-12-31 | 2019-01-11 | 5FF+10d | 20d | 0d |  | 400,000 |
| 7 | 1.1.1.4 | 4. Tabiques 2 cara | 14d | 2019-01-15 | 2019-02-01 | 6FF+15d | 20d | 0d |  | 400,000 |
| 8 | 1.1.1.5 | 5. pintura | 15d | 2019-02-04 | 2019-02-22 | 7FF+15d | 20d | 0d |  | 450,000 |
| 9 | 1.1.1.6 | 6. cierre | 10d | 2019-02-27 | 2019-03-12 | 8FF+12d | 20d |  |  | 200,000 |
| 10 | 1.1.2 | **Piso 2** | 62d | 2018-12-24 | 2019-03-19 |  | 0d |  |  | 2,050,000 |
| 11 | 1.1.2.1 | 1. Descarachado | 5d | 2018-12-24 | 2018-12-28 | 4 | 0d |  |  | 250,000 |
| 12 | 1.1.2.2 | 2. Yeso | 8d | 2018-12-26 | 2019-01-04 | 11FF+5d | 15d | 0d |  | 350,000 |
| 13 | 1.1.2.3 | 3. Tabiques | 10d | 2019-01-07 | 2019-01-18 | 12FF+10d | 15d | 0d |  | 400,000 |
| 14 | 1.1.2.4 | 4. Tabiques 2 cara | 14d | 2019-01-22 | 2019-02-08 | 13FF+15d | 15d | 0d |  | 400,000 |
| 15 | 1.1.2.5 | 5. pintura | 15d | 2019-02-11 | 2019-03-01 | 14FF+15d | 15d | 0d |  | 450,000 |
| 16 | 1.1.2.6 | 6. cierre | 10d | 2019-03-06 | 2019-03-19 | 15FF+12d | 15d |  |  | 200,000 |
| 17 | 1.1.3 | **Piso 3** | 62d | 2018-12-31 | 2019-03-26 |  | 0d |  |  | 2,050,000 |
| 18 | 1.1.3.1 | 1. Descarachado | 5d | 2018-12-31 | 2019-01-04 | 11 | 0d |  |  | 250,000 |
| 19 | 1.1.3.2 | 2. Yeso | 8d | 2019-01-02 | 2019-01-11 | 18FF+5d | 10d | 0d |  | 350,000 |
| 20 | 1.1.3.3 | 3. Tabiques | 10d | 2019-01-14 | 2019-01-25 | 19FF+10d | 10d | 0d |  | 400,000 |
| 21 | 1.1.3.4 | 4. Tabiques 2 cara | 14d | 2019-01-29 | 2019-02-15 | 20FF+15d | 10d | 0d |  | 400,000 |
| 22 | 1.1.3.5 | 5. pintura | 15d | 2019-02-18 | 2019-03-08 | 21FF+15d | 10d | 0d |  | 450,000 |
| 23 | 1.1.3.6 | 6. cierre | 10d | 2019-03-13 | 2019-03-26 | 22FF+12d | 10d |  |  | 200,000 |
| 24 | 1.1.4 | **Piso 4** | 62d | 2019-01-07 | 2019-04-02 |  | 0d |  |  | 2,050,000 |
| 25 | 1.1.4.1 | 1. Descarachado | 5d | 2019-01-07 | 2019-01-11 | 18 | 0d |  |  | 250,000 |
| 26 | 1.1.4.2 | 2. Yeso | 8d | 2019-01-09 | 2019-01-18 | 25FF+5d | 5d | 0d |  | 350,000 |
| 27 | 1.1.4.3 | 3. Tabiques | 10d | 2019-01-21 | 2019-02-01 | 26FF+10d | 5d | 0d |  | 400,000 |
| 28 | 1.1.4.4 | 4. Tabiques 2 cara | 14d | 2019-02-05 | 2019-02-22 | 27FF+15d | 5d | 0d |  | 400,000 |
| 29 | 1.1.4.5 | 5. pintura | 15d | 2019-02-25 | 2019-03-15 | 28FF+15d | 5d | 0d |  | 450,000 |
| 30 | 1.1.4.6 | 6. cierre | 10d | 2019-03-20 | 2019-04-02 | 29FF+12d | 5d |  |  | 200,000 |

| ID | WBS | Task | Duration | Start | Finish | Predecessors | Total slack | Cost |
| --- | --- | --- | --- | --- | --- | --- | --- | --- |
| 31 | 1.1.5 | **Piso 5** | 62d | 2019-01-14 | 2019-04-09 |  | 0d | 2,050,000 |
| 32 | 1.1.5.1 | 1. Descarachado | 5d | 2019-01-14 | 2019-01-18 | 25 | 0d | 250,000 |
| 33 | 1.1.5.2 | 2. Yeso | 8d | 2019-01-16 | 2019-01-25 | 32FF+5d | 0d | 350,000 |
| 34 | 1.1.5.3 | 3. Tabiques | 10d | 2019-01-28 | 2019-02-08 | 33FF+10d | 0d | 400,000 |
| 35 | 1.1.5.4 | 4. Tabiques 2 cara | 14d | 2019-02-12 | 2019-03-01 | 34FF+15d | 0d | 400,000 |
| 36 | 1.1.5.5 | 5. pintura | 15d | 2019-03-04 | 2019-03-22 | 35FF+15d | 0d | 450,000 |
| 37 | 1.1.5.6 | 6. cierre | 10d | 2019-03-27 | 2019-04-09 | 36FF+12d | 0d | 200,000 |
